# Commercial Construction

Schedule from MS Project, 2023-06-06 to 2024-07-02, 10 hours a day, costs in $.
Notes from MS Project appear here. Remember that when exporting to Excel, each note is limited to 255 characters, so anything longer than this sample sentence will be truncated and will not be available to the Cost Report. Use shorter more focused notes.

## Calendars

- Construction Calendar: Mon-Sat 07:00-12:00, 13:00-18:00; Sun off.

## Resources

| Resource | Unit | Rate |
| --- | --- | --- |
| G.C. General Management |  | 120 |
| G.C. Project Management |  | 120 |
| G.C. Procurement |  | 100 |
| G.C. Scheduler |  | 80 |
| G.C. Accounting |  | 80 |
| G.C. Superintendent |  | 160 |
| G.C. Survey Crew |  | 80 |
| G.C. Rough Carpenter Crew |  | 80 |
| G.C. Labor Crew |  | 100 |
| G.C. Concrete Crew |  | 100 |
| G.C. Finish Carpenter Crew |  | 100 |
| Site Grading Contractor |  |  |
| Plumbing Contractor |  |  |
| Plumbing Contractor Management |  |  |
| Electric Contractor |  |  |
| Electric Contractor Management |  |  |
| HVAC Contractor |  |  |
| HVAC Contractor Management |  |  |
| Elevator Contractor |  |  |
| Elevator Contractor Management |  |  |
| Steel Erection Contractor |  |  |
| Steel Erection Contractor Management |  |  |
| Drywall Contractor |  |  |
| Masonry Contractor |  |  |
| Tile Contractor |  |  |
| Roofing Contractor |  |  |
| Roofing Contractor Management |  |  |
| Window Contractor |  |  |
| Carpet Contractor |  |  |
| Landscape Contractor |  |  |
| Paving Contractor |  |  |
| Painting Contractor |  |  |
| Stud 2x4 | ea | 10 |
| Pipe | ft | 3 |
| Duct | ft | 18 |
| Steel | ton | 1100 |
| Drywall | ea | 16 |
| CMU Block | ea | 2.5 |
| Tile | sf | 4 |
| Roofing | sq | 160 |
| Windows | ea | 450 |
| Carpet | sy | 22 |
| Sod | sf | 0.6 |
| Paint | gal | 35 |
| Concrete | ton | 170 |
| Wire | ft | 1.5 |
| Gravel | ton | 35 |
| Plywood | ea | 25 |
| Office Trailer | ea | 3500 |
| Fence | ft | 7 |
| Fill Dirt | ton | 24 |
| Wood | ft | 1.2 |
| Door kit | ea | 800 |
| Door kit ext | ea | 1200 |
| Trim | ft | 3.75 |
| Primer | gal | 27 |
| Conduit | ft | 0.75 |
| Finish hardware kit | ea | 42.55 |
| Mortar | bag | 10.5 |
| Grout | cu yd | 180 |

## Schedule

| ID | WBS | Task | Duration | Start | Finish | Predecessors | Total slack | Free slack | Resources | Work | Cost |
| --- | --- | --- | --- | --- | --- | --- | --- | --- | --- | --- | --- |
| 1 | 1 | **General Conditions** | 15d | 2023-06-06 | 2023-06-22 |  | 0d |  |  | 240.19h | 28,142.47 |
| 2 | 1.1 | Receive notice to proceed and sign contract | 3d | 2023-06-06 | 2023-06-08 |  | 0d |  | G.C. General Management | 30h | 3,600 |
| 3 | 1.2 | Submit bond and insurance documents | 5d | 2023-06-09 | 2023-06-14 | 2 | 326.3d | 0d | G.C. Project Management [50%]; G.C. General Management [50%] | 33h | 4,620 |
| 4 | 1.3 | Prepare and submit project schedule | 2d | 2023-06-15 | 2023-06-16 | 3 | 326.3d | 0d | G.C. Project Management [25%]; G.C. Scheduler | 25h | 2,440 |
| 5 | 1.4 | Prepare and submit schedule of values | 0.7d | 2023-06-17 | 2023-06-17 | 4 | 326.3d |  | G.C. General Management [10%]; G.C. Project Management [50%]; G.C. Accounting; G.C. Scheduler | 22.19h | 2,102.47 |
| 6 | 1.5 | Obtain building permits | 8d | 2023-06-09 | 2023-06-17 | 2 | 107.17d | 0d | G.C. Project Management [25%] | 30h | 4,200 |
| 7 | 1.6 | Submit preliminary shop drawings | 4d | 2023-06-19 | 2023-06-22 | 6 | 107.17d | 0d | G.C. Project Management [50%]; G.C. Survey Crew | 90h | 9,800 |
| 8 | 1.7 | Submit monthly requests for payment | 1.4d | 2023-06-09 | 2023-06-10 | 2 | 29.77d | 0d | G.C. Project Management [50%] | 10h | 1,380 |
| 9 | 2 | **Long Lead Procurement** | 57d | 2023-06-10 | 2023-08-16 |  | 29.77d |  | G.C. Procurement [20%] | 114h | 82,275 |
| 10 | 2.1 | Submit shop drawings and order long lead items - steel | 9d | 2023-06-10 | 2023-06-21 | 8 | 29.77d | 0d | Steel Erection Contractor Management [0.1%] |  | 3,500 |
| 11 | 2.2 | Submit shop drawings and order long lead items - roofing | 9d | 2023-06-23 | 2023-07-03 | 7 | 272d | 198.81d | Roofing Contractor Management [0.1%] |  | 2,000 |
| 12 | 2.3 | Submit shop drawings and order long lead items - elevator | 9d | 2023-06-23 | 2023-07-03 | 7 | 249.91d | 182d | Elevator Contractor Management [0.1%] |  | 4,250 |
| 13 | 2.4 | Submit shop drawings and order long lead items - plumbing | 9d | 2023-06-23 | 2023-07-03 | 7 | 107.17d |  | Plumbing Contractor Management [0.1%] |  | 1,750 |
| 14 | 2.5 | Submit shop drawings and order long lead items - electric | 9d | 2023-06-23 | 2023-07-03 | 7 | 107.17d |  | Electric Contractor Management [0.1%] |  | 2,250 |
| 15 | 2.6 | Submit shop drawings and order long lead items - hVAC | 9d | 2023-06-23 | 2023-07-03 | 7 | 107.17d |  | HVAC Contractor Management [0.1%] |  | 3,175 |
| 16 | 2.7 | Detail, fabricate and deliver steel | 48d | 2023-06-21 | 2023-08-16 | 10 | 29.77d |  | Steel Erection Contractor Management [0.1%]; Steel Erection Contractor [0.1%] |  | 52,250 |
| 17 | 3 | **Mobilize on Site** | 13.77d | 2023-06-09 | 2023-06-24 |  | 0d |  | G.C. Superintendent | 844.36h | 173,207.6 |
| 18 | 3.1 | Install temporary power | 2d | 2023-06-09 | 2023-06-10 | 2 | 0d |  | Electric Contractor [0.1%]; Electric Contractor Management [0.1%]; Wire [2600 ft] |  | 30,400 |
| 19 | 3.2 | Install temporary water service | 2d | 2023-06-09 | 2023-06-10 | 2 | 0d |  | Plumbing Contractor [0.1%]; Plumbing Contractor Management [0.1%]; Pipe [170 ft] |  | 3,210 |
| 20 | 3.3 | Set up site office | 4d | 2023-06-12 | 2023-06-17 | 18, 19 | 0d |  | G.C. Labor Crew [800%]; Office Trailer [1 ea] | 480h | 59,500 |
| 21 | 3.4 | Set line and grade benchmarks | 1.33d | 2023-06-19 | 2023-06-20 | 20 | 0d |  | G.C. Survey Crew [300%] | 60h | 5,600 |
| 22 | 3.5 | Prepare site - lay down yard and temporary fencing | 1.4d | 2023-06-20 | 2023-06-24 | 21 | 0d |  | Site Grading Contractor [0%]; G.C. Labor Crew [800%]; Fence [1700 ft] | 160h | 47,800 |
| 23 | 4 | **Site Grading and Utilities** | 42.8d | 2023-06-24 | 2023-08-14 |  | 0d |  | G.C. Superintendent | 560h | 184,200 |
| 24 | 4.1 | Clear and grub site | 2d | 2023-06-24 | 2023-06-27 | 20, 22 | 0d |  | Site Grading Contractor [0.1%] |  | 22,500 |
| 25 | 4.2 | Stone site access and temporary parking area | 2d | 2023-06-27 | 2023-06-29 | 24, 22 | 0d |  | Site Grading Contractor [0.1%]; Gravel [600 ton] |  | 28,500 |
| 26 | 4.3 | Rough grade site (cut and fill) | 18d | 2023-06-29 | 2023-07-20 | 25 | 0d |  | Site Grading Contractor [0.1%]; Fill Dirt [500 ton] |  | 21,500 |
| 27 | 4.4 | Install storm drainage | 9d | 2023-07-20 | 2023-07-31 | 26 | 8d |  | Site Grading Contractor [0.1%] |  | 4,200 |
| 28 | 4.5 | Install exterior fire line and building fire riser | 9d | 2023-07-20 | 2023-07-31 | 26 | 0d |  | Plumbing Contractor [0.1%] |  | 3,200 |
| 29 | 4.6 | Perform final site grading | 9d | 2023-07-31 | 2023-08-10 | 27FF+1d, 28 | 0d |  | Site Grading Contractor [0.1%] |  | 12,300 |
| 30 | 4.7 | Erect building batter boards and layout building | 2.8d | 2023-08-10 | 2023-08-14 | 29 | 0d |  | G.C. Survey Crew [300%] | 120h | 11,040 |

Notes:
- 1: Final schedule can be submitted when outstanding bond and insurance documents are approved.
- 9: Waiting on revision to drawings. This should not be a concern given the timeframe to submit for approval.
- 17: Still waiting on approval for laydown yard contract. Alternate site is ready if needed.
- 23: Be sure inspection is on site before clearing and grading for the final approval of trees that are to remain.

| ID | WBS | Task | Duration | Start | Finish | Predecessors | Total slack | Free slack | Resources | Work | Cost |
| --- | --- | --- | --- | --- | --- | --- | --- | --- | --- | --- | --- |
| 31 | 5 | **Foundations** | 32.36d | 2023-08-14 | 2023-09-20 |  | 0d |  |  | 1850h | 224,385 |
| 32 | 5.1 | Excavate foundations | 4.2d | 2023-08-14 | 2023-09-01 | 30 | 0d |  | Site Grading Contractor [0.1%]; G.C. Labor Crew [400%] | 240h | 29,875 |
| 33 | 5.2 | Excavate elevator pit | 2.8d | 2023-08-14 | 2023-08-26 | 30 | 181.98d | 0d | Site Grading Contractor [0.1%]; G.C. Labor Crew [400%] | 160h | 22,150 |
| 34 | 5.3 | Form column piers and spread foundations | 0.67d | 2023-09-01 | 2023-09-01 | 32 | 0d |  | G.C. Rough Carpenter Crew [300%] | 30h | 2,800 |
| 35 | 5.4 | Rough-in electric and plumbing in elevator | 2.1d | 2023-08-26 | 2023-09-06 | 33 | 181.98d | 0d | Plumbing Contractor [0.1%]; Electric Contractor [0.1%]; G.C. Labor Crew [800%] | 240h | 33,200 |
| 36 | 5.5 | Form elevator pit walls | 1.4d | 2023-09-06 | 2023-09-07 | 35 | 181.98d | 0d | G.C. Rough Carpenter Crew [300%]; G.C. Labor Crew [800%] | 220h | 23,920 |
| 37 | 5.6 | Set reinforcing and anchor bolts | 2.1d | 2023-09-01 | 2023-09-04 | 34 | 0d |  | G.C. Concrete Crew [800%] | 240h | 27,600 |
| 38 | 5.7 | Pour column piers and foundations | 2.8d | 2023-09-07 | 2023-09-11 | 37 | 0d |  | G.C. Concrete Crew [800%] | 320h | 36,800 |
| 39 | 5.8 | Pour concrete elevator walls | 0.7d | 2023-09-07 | 2023-09-09 | 36 | 181.98d | 0d | G.C. Concrete Crew [800%] | 80h | 9,200 |
| 40 | 5.9 | Cure elevator wall concrete | 6d | 2023-09-09 | 2023-09-16 | 39 | 181.98d | 0d |  |  |  |
| 41 | 5.10 | Cure piers and foundations | 6d | 2023-09-11 | 2023-09-18 | 38 | 0d |  |  |  |  |
| 42 | 5.11 | Strip wall forms | 0.7d | 2023-09-16 | 2023-09-16 | 40 | 181.98d | 0d | G.C. Labor Crew [800%] | 80h | 9,200 |
| 43 | 5.12 | Strip column piers and foundation forms | 1.4d | 2023-09-18 | 2023-09-20 | 41 | 0d |  | G.C. Labor Crew [800%] | 160h | 18,400 |
| 44 | 5.13 | Install pneumatic tube in elevator pit | 2d | 2023-09-16 | 2023-09-19 | 42 | 181.98d | 0d | Elevator Contractor [0.1%] |  |  |
| 45 | 5.14 | Prepare and pour concrete floor in elevator pit | 0.7d | 2023-09-19 | 2023-09-20 | 44 | 181.98d | 114.07d | G.C. Concrete Crew [800%]; Concrete [12 ton] | 80h | 11,240 |
| 46 | 6 | **Steel Erection** | 70.83d | 2023-09-20 | 2023-12-11 |  | 0d |  |  | 2880h | 505,420 |
| 47 | 6.1 | Erect steel columns, beams and joist - 1st and 2nd floors | 6.25d | 2023-09-20 | 2023-09-30 | 43, 16 | 0d |  | Steel Erection Contractor [0.1%]; Steel [17 ton]; G.C. Labor Crew [800%] | 720h | 136,200 |
| 48 | 6.2 | Erect steel columns, beams and joist - 3rd floor and roof | 6.25d | 2023-09-30 | 2023-10-11 | 47 | 0d |  | Steel Erection Contractor [0.1%]; Steel [12 ton]; G.C. Labor Crew [800%] | 720h | 133,700 |
| 49 | 6.3 | Install miscellaneous iron and bracing - 1st and 2nd floors | 6.25d | 2023-12-01 | 2023-12-11 | 47 | 67.91d | 0d | Steel Erection Contractor [0.1%]; Steel [6 ton]; G.C. Labor Crew [800%] | 720h | 93,320 |
| 50 | 6.4 | Install miscellaneous iron and bracing - 3rd floor and roof | 6.25d | 2023-10-11 | 2023-10-21 | 48 | 0d |  | Steel Erection Contractor [0.1%]; Steel [15 ton]; G.C. Labor Crew [400%] | 360h | 70,400 |
| 51 | 6.5 | Install stairs and miscellaneous iron railing | 6.25d | 2023-10-21 | 2023-11-01 | 50 | 0d |  | Steel Erection Contractor [0.1%]; Steel [3 ton]; G.C. Labor Crew [400%] | 360h | 62,300 |
| 52 | 6.6 | Touch-up paint on steel | 4d | 2023-11-01 | 2023-11-06 | 51 | 0d |  | Steel Erection Contractor [0.1%] |  | 9,500 |
| 53 | 7 | **Form and Pour Concrete - Floors and Roof** | 87.64d | 2023-09-30 | 2024-01-10 |  | 23d |  |  | 3467.83h | 898,603.83 |
| 54 | 7.1 | Form 2nd floor including all floor openings | 2.8d | 2023-11-06 | 2023-11-10 | 52, 13, 14, 15, 47 | 0d |  | G.C. Rough Carpenter Crew [300%]; G.C. Labor Crew [200%]; Wood [675 ft] | 200h | 21,050 |
| 55 | 7.2 | Install rebar and in-floor utilities (including mechanical, electrical, plumbing) | 8.25d | 2023-09-30 | 2023-10-14 | 47 | 23d |  | G.C. Labor Crew [240%]; Plumbing Contractor [0.1%]; Electric Contractor [0.1%]; Pipe [175 ft]; Wire [560 ft] | 288h | 135,365 |
| 56 | 7.3 | Pour 2nd floor slab | 2.1d | 2023-11-10 | 2023-11-14 | 55, 54 | 0d |  | G.C. Concrete Crew [800%]; Concrete [150 ton] | 240h | 53,100 |
| 57 | 7.4 | Cure 2nd floor slab | 6d | 2023-11-14 | 2023-11-21 | 56 | 0d |  |  |  |  |
| 58 | 7.5 | Strip forms from 2nd floor slab | 2.2d | 2023-11-21 | 2023-11-23 | 57 | 90.66d | 0d |  |  |  |
| 59 | 7.6 | Form 3rd floor including all floor openings | 2.8d | 2023-11-21 | 2023-11-25 | 57 | 8.12d |  | G.C. Rough Carpenter Crew [300%]; G.C. Labor Crew [200%]; Wood [675 ft] | 100h | 11,850 |
| 60 | 7.7 | Install rebar and in-floor utilities (including mechanical, electrical, plumbing) | 8.52d | 2023-11-21 | 2023-12-05 | 57 | 0d |  | G.C. Labor Crew [200%]; Plumbing Contractor [0.1%]; Electric Contractor [0.1%]; Pipe [175 ft]; Wire [430 ft] | 242.33h | 129,703.33 |
| 61 | 7.8 | Pour 3rd floor slab | 2.1d | 2023-12-05 | 2023-12-08 | 60, 59 | 0d |  | G.C. Concrete Crew [800%]; Concrete [150 ton] | 240h | 53,100 |
| 62 | 7.9 | Cure 3rd floor slab | 6d | 2023-12-08 | 2023-12-15 | 61 | 0d |  |  |  |  |
| 63 | 7.10 | Strip forms from 3rd floor slab | 1.4d | 2023-12-15 | 2023-12-16 | 62 | 21.12d |  | G.C. Labor Crew [800%] | 160h | 18,400 |
| 64 | 7.11 | Form roof slab including all floor openings | 2.8d | 2023-12-15 | 2023-12-20 | 62 | 8.12d |  | G.C. Rough Carpenter Crew [300%]; G.C. Labor Crew [200%]; Wood [675 ft] | 200h | 21,050 |
| 65 | 7.12 | Install rebar and in-floor utilities (including mechanical, electrical, plumbing) | 8.45d | 2023-12-15 | 2023-12-29 | 62 | 0d |  | G.C. Labor Crew [300%]; Plumbing Contractor [0.1%]; Electric Contractor [0.1%]; Pipe [250 ft]; Wire [550 ft] | 363.5h | 144,125 |
| 66 | 7.13 | Pour roof slab | 2.1d | 2023-12-29 | 2024-01-02 | 65, 64 | 0d |  | G.C. Concrete Crew [800%]; Concrete [150 ton] | 240h | 53,100 |
| 67 | 7.14 | Cure roof slab | 6d | 2024-01-02 | 2024-01-09 | 66 | 0d |  |  |  |  |
| 68 | 7.15 | Strip forms from roof slab | 1.4d | 2024-01-09 | 2024-01-10 | 67 | 0d |  | G.C. Labor Crew [800%] | 160h | 18,400 |
| 69 | 7.16 | Form 1st floor | 2.1d | 2023-11-27 | 2023-11-30 | 58 | 91.8d | 1.15d | G.C. Rough Carpenter Crew [300%]; Wood [675 ft] | 90h | 9,090 |
| 70 | 7.17 | Install electrical underground | 2.8d | 2023-11-27 | 2023-12-01 | 58 | 90.66d | 0d | Electric Contractor [0.1%]; G.C. Labor Crew [400%]; Wire [875 ft] | 160h | 82,012.5 |
| 71 | 7.18 | Install plumbing underground | 2.8d | 2023-11-27 | 2023-12-01 | 58 | 90.66d | 0d | Plumbing Contractor [0.1%]; G.C. Labor Crew [400%]; Pipe [1 ft] | 160h | 50,503 |
| 72 | 7.19 | Install rebar and in-floor utilities | 2.1d | 2023-11-23 | 2023-11-27 | 58 | 95.2d | 4.55d | G.C. Concrete Crew [800%]; Electric Contractor [0.1%]; Plumbing Contractor [0.1%]; Pipe [75 ft]; Wire [120 ft] | 240h | 28,005 |
| 73 | 7.20 | Pour 1st floor slab | 2.1d | 2023-12-01 | 2023-12-05 | 69, 70, 71, 72 | 90.66d | 0d | G.C. Concrete Crew [800%]; Concrete [150 ton] | 240h | 53,100 |
| 74 | 7.21 | Cure 1st floor slab | 6d | 2023-12-05 | 2023-12-12 | 73 | 90.66d | 0d |  |  |  |
| 75 | 7.22 | Strip forms from 1st floor slab | 1.24d | 2023-12-12 | 2023-12-14 | 74 | 90.66d | 0d | G.C. Labor Crew [800%] | 144h | 16,650 |

Notes:
- 31: Concrete supplier needs 3 days notice before delivery. Be sure they use the rear site entrance.
- 46: Still no word on whether a crane will be necessary or steel pieces will be lifted by excavator.
- 53: 3 day notice in effect for concrete delivery

| ID | WBS | Task | Duration | Start | Finish | Predecessors | Total slack | Free slack | Resources | Work | Cost |
| --- | --- | --- | --- | --- | --- | --- | --- | --- | --- | --- | --- |
| 76 | 8 | **Carpentry Work** | 12d | 2024-01-10 | 2024-01-24 |  | 0d |  | G.C. Superintendent | 600h | 91,900 |
| 77 | 8.1 | Install exterior sheathing and metal studs | 8.4d | 2024-01-10 | 2024-01-24 | 63, 68 | 0d |  | Drywall Contractor [0.1%]; G.C. Labor Crew [400%] | 480h | 72,700 |
| 78 | 9 | **Masonry Work** | 61.81d | 2023-12-12 | 2024-02-21 |  | 37.81d |  |  |  | 124,970.91 |
| 79 | 9.1 | Rough-in plumbing at toilets and masonry walls | 16d | 2023-12-14 | 2024-01-02 | 75, 13 | 90.66d | 0d | Plumbing Contractor [0.1%] |  | 12,700 |
| 80 | 9.2 | Lay masonry at core, mechanical, and toilets | 44d | 2023-12-12 | 2024-01-31 | 49, 50 | 67.91d | 0d | Masonry Contractor [0.1%]; CMU Block [3200 ea]; Mortar [260 bag]; Grout [12 cu yd] |  | 21,930.91 |
| 81 | 9.3 | Install exterior masonry work | 20d | 2024-01-24 | 2024-02-16 | 77 | 0d |  | Masonry Contractor [0.1%]; CMU Block [2600 ea]; Mortar [200 bag]; Grout [8 cu yd] |  | 42,540 |
| 82 | 9.4 | Install roof drains | 2d | 2024-02-16 | 2024-02-19 | 81 | 74.19d | 1d | Roofing Contractor [0.1%] |  | 12,700 |
| 83 | 9.5 | Install tile in toilet rooms | 9d | 2024-01-02 | 2024-01-12 | 79 | 90.66d | 0d | Tile Contractor [0.1%]; Tile [1200 sf] |  | 28,300 |
| 84 | 9.6 | Clean masonry | 4d | 2024-02-16 | 2024-02-21 | 81 | 64d | 0d | Masonry Contractor [0.1%] |  | 4,500 |
| 85 | 9.7 | Clean toilet room tile | 4d | 2024-01-12 | 2024-01-17 | 83 | 90.66d | 62.66d | Tile Contractor [0.1%] |  | 2,300 |
| 86 | 10 | **Roofing** | 26d | 2024-02-16 | 2024-03-18 |  | 73.19d |  |  |  | 323,300 |
| 87 | 10.1 | Install flashing at parapet walls | 3d | 2024-02-16 | 2024-02-20 | 81 | 73.19d | 0d | Roofing Contractor [0.1%] |  | 1,750 |
| 88 | 10.2 | Pour lightweight concrete roof fill | 2d | 2024-02-20 | 2024-02-22 | 11, 82, 87 | 73.19d | 0d | Roofing Contractor [0.1%] |  | 3,750 |
| 89 | 10.3 | Install seamless roofing material | 4d | 2024-02-27 | 2024-03-02 | 88FS+4d | 73.19d | 0d | Roofing Contractor [0.1%]; Roofing [1600 sq] |  | 281,700 |
| 90 | 10.4 | Spread stone ballast on seamless roof | 4d | 2024-03-02 | 2024-03-07 | 89 | 73.19d | 0d | Roofing Contractor [0.1%] |  | 12,400 |
| 91 | 10.5 | Set rooftop equipment | 9d | 2024-03-07 | 2024-03-18 | 90 | 73.19d | 18d | HVAC Contractor [0.1%] |  | 23,700 |
| 92 | 11 | **Window wall and store front closures** | 49d | 2024-02-16 | 2024-04-13 |  | 0d |  |  | 1600h | 286,700 |
| 93 | 11.1 | Install window wall aluminum and glass | 14d | 2024-02-16 | 2024-03-11 | 81 | 0d |  | Window Contractor [0.1%]; G.C. Labor Crew [400%] | 800h | 114,100 |
| 94 | 11.2 | Install interior stud walls and drywall | 14d | 2024-03-11 | 2024-04-03 | 93 | 0d |  | Drywall Contractor [0.1%]; G.C. Labor Crew [400%]; Drywall [850 ea] | 800h | 118,100 |
| 95 | 11.3 | Install interior doors and hardware | 9d | 2024-04-03 | 2024-04-13 | 94 | 3d |  | Door kit [36 ea] |  | 28,800 |
| 96 | 11.4 | Install store front doors and hardware | 12d | 2024-02-16 | 2024-03-01 | 81 | 28d |  | Window Contractor [0.1%]; Door kit ext [6 ea] |  | 25,700 |
| 97 | 12 | **Building Finishes** | 64d | 2024-03-11 | 2024-05-24 |  | 4.5d |  |  | 1920h | 392,455 |
| 98 | 12.1 | Install millwork and wood trim | 8.4d | 2024-04-03 | 2024-04-17 | 96, 94 | 0d |  | G.C. Finish Carpenter Crew [800%]; Trim [1200 ft] | 960h | 114,900 |
| 99 | 12.2 | Paint walls and woodwork | 16d | 2024-04-17 | 2024-05-06 | 98, 95 | 0d |  | Painting Contractor [0.1%]; Paint [125 gal]; Primer [40 gal] |  | 47,455 |
| 100 | 12.3 | Install conduit at ceiling plenum space | 12d | 2024-03-11 | 2024-03-25 | 93 | 20d | 0d | Electric Contractor [0.1%]; Conduit [265 ft] |  | 7,698.75 |
| 101 | 12.4 | Install duct in ceiling plenum space | 12d | 2024-04-03 | 2024-04-17 | 94, 100 | 14d | 0d | HVAC Contractor [0.1%]; Duct [120 ft] |  | 7,760 |
| 102 | 12.5 | Install ceiling grid | 9d | 2024-04-17 | 2024-04-27 | 94, 101 | 14d | 0d | Drywall Contractor [0.1%] |  | 12,500 |
| 103 | 12.6 | Install ceiling tile | 9d | 2024-04-27 | 2024-05-08 | 102 | 14d |  | Drywall Contractor [0.1%] |  | 15,600 |
| 104 | 12.7 | hang wallpaper | 9d | 2024-04-27 | 2024-05-08 | 102 | 14d |  | Painting Contractor [0.1%] |  | 6,400 |
| 105 | 12.8 | Install building carpet | 16d | 2024-05-06 | 2024-05-24 | 99 | 0d |  | Carpet Contractor [0.1%]; Carpet [300 sy] |  | 15,350 |
| 106 | 12.9 | Install hardware and accessories | 8.4d | 2024-05-06 | 2024-05-20 | 99 | 4d |  | G.C. Finish Carpenter Crew [800%]; Finish hardware kit [75 ea] | 960h | 113,591.25 |
| 107 | 12.10 | Complete interior and exterior sod and plantings | 8d | 2024-05-06 | 2024-05-15 | 99 | 4.5d | 0d | Landscape Contractor [0.1%] |  | 22,500 |
| 108 | 12.11 | Pave, curb, and stripe parking lot | 8d | 2024-05-15 | 2024-05-24 | 107 | 4.5d |  | Paving Contractor [0.1%] |  | 28,700 |

| ID | WBS | Task | Type | Duration | Start | Finish | Predecessors | Total slack | Free slack | Resources | Work | Cost |
| --- | --- | --- | --- | --- | --- | --- | --- | --- | --- | --- | --- | --- |
| 109 | 13 | **Elevators** |  | 32d | 2024-02-01 | 2024-03-08 |  | 67.91d |  |  |  | 114,500 |
| 110 | 13.1 | Set elevator equipment in shafts |  | 16d | 2024-02-01 | 2024-02-19 | 80, 45, 12 | 67.91d | 0d | Elevator Contractor [0.1%] |  | 54,000 |
| 111 | 13.2 | Set equipment in mechanical room |  | 8d | 2024-02-20 | 2024-02-28 | 110 | 67.91d | 0d | Elevator Contractor [0.1%] |  | 46,000 |
| 112 | 13.3 | Test and align doors and equipment |  | 8d | 2024-02-29 | 2024-03-08 | 111 | 67.91d |  | Elevator Contractor [0.1%] |  | 14,500 |
| 113 | 14 | **Plumbing** |  | 72d | 2024-02-21 | 2024-05-15 |  | 8d |  |  | 1120h | 175,000 |
| 114 | 14.1 | Rough-in plumbing in drywall walls |  | 11.2d | 2024-03-11 | 2024-03-29 | 93 | 28d | 0d | Plumbing Contractor [0.1%]; G.C. Labor Crew [400%] | 640h | 91,400 |
| 115 | 14.2 | Tie-in fire line riser and set valves |  | 8d | 2024-02-21 | 2024-03-01 | 84 | 64d | 56d | Plumbing Contractor [0.1%] |  | 8,500 |
| 116 | 14.3 | Set plumbing fixtures and trim |  | 8.4d | 2024-03-29 | 2024-04-12 | 85, 114, 79 | 28d | 20d | Plumbing Contractor [0.1%]; G.C. Labor Crew [400%] | 480h | 67,600 |
| 117 | 14.4 | Flush, test, and clean piping and fixtures |  | 8d | 2024-05-06 | 2024-05-15 | 99, 115, 116 | 8d |  | Plumbing Contractor [0.1%] |  | 7,500 |
| 118 | 15 | **Electrical** |  | 124.66d | 2023-12-14 | 2024-05-07 |  | 32.19d |  |  | 960h | 185,200 |
| 119 | 15.1 | Rough-in electrical in masonry walls |  | 11.2d | 2023-12-14 | 2024-01-02 | 75, 14 | 91.66d | 71.66d | Electric Contractor [0.1%]; G.C. Labor Crew [400%] | 640h | 90,000 |
| 120 | 15.2 | Rough-in electrical in drywall walls |  | 16d | 2024-03-11 | 2024-03-29 | 93 | 28d | 8d | Electric Contractor [0.1%] |  | 14,500 |
| 121 | 15.3 | Pull wire in conduit and set area transformers |  | 12d | 2024-03-25 | 2024-04-08 | 119, 100 | 20d | 0d | Electric Contractor [0.1%] |  | 5,400 |
| 122 | 15.4 | Install and terminate electrical devices |  | 12d | 2024-04-08 | 2024-04-22 | 121, 120 | 20d | 5d | Electric Contractor [0.1%] |  | 12,700 |
| 123 | 15.5 | Make electrical terminations for hVAC equipment |  | 2d | 2024-04-08 | 2024-04-10 | 121, 91 | 55.19d | 15d | Electric Contractor [0.1%] |  | 2,300 |
| 124 | 15.6 | Install light fixtures - test and clean |  | 5.6d | 2024-04-27 | 2024-05-07 | 102, 122 | 15d |  | Electric Contractor [0.1%]; G.C. Labor Crew [400%] | 320h | 60,300 |
| 125 | 16 | **heating and Ventilating - AC** |  | 132.66d | 2023-12-14 | 2024-05-16 |  | 40.19d |  |  | 1280h | 212,150 |
| 126 | 16.1 | Set equipment in mechanical room |  | 5.6d | 2024-02-01 | 2024-02-12 | 80, 15 | 93.4d | 24.21d | HVAC Contractor [0.1%]; G.C. Labor Crew [400%] | 320h | 89,800 |
| 127 | 16.2 | Rough-in mechanical in masonry walls |  | 11.2d | 2023-12-14 | 2024-02-01 | 75 | 102.85d | 33.66d | HVAC Contractor [0.1%]; G.C. Labor Crew [400%] | 640h | 77,000 |
| 128 | 16.3 | Rough-in mechanical in drywall walls |  | 5.6d | 2024-03-11 | 2024-03-20 | 93 | 89.19d |  | HVAC Contractor [0.1%]; G.C. Labor Crew [400%] | 320h | 40,000 |
| 129 | 16.4 | Install duct in building chase |  | 12d | 2024-03-11 | 2024-03-25 | 126, 127, 93 | 69.19d | 29d | HVAC Contractor [0.1%] |  | 1,750 |
| 130 | 16.5 | Set hVAC trim and test and balance system |  | 16d | 2024-04-27 | 2024-05-16 | 102, 129, 123 | 40.19d |  | HVAC Contractor [0.1%] |  | 3,600 |
| 131 | 17 | **Final Clean-up and Occupancy** |  | 46.1d | 2024-04-03 | 2024-05-27 |  | 31.09d |  | G.C. Superintendent | 861h | 165,210 |
| 132 | 17.1 | Install hard tile flooring in common areas |  | 2.8d | 2024-04-03 | 2024-04-08 | 94 | 36.8d | 0d | Tile Contractor [0.1%]; G.C. Labor Crew [400%] | 160h | 61,100 |
| 133 | 17.2 | Clean hard tile floors |  | 2.1d | 2024-04-08 | 2024-04-12 | 132 | 36.8d |  | Tile Contractor [0.1%]; G.C. Labor Crew [400%] | 120h | 16,550 |
| 134 | 17.3 | Remove debris from building and do final clean-up |  | 2.1d | 2024-05-24 | 2024-05-27 | 105, 104, 106, 107, 117, 124, 103, 133 | 0d |  | G.C. Labor Crew [400%] | 120h | 13,800 |
| 135 | 17.4 | Substantial completion date | milestone | 0d | 2024-05-27 | 2024-05-27 | 134 | 31.09d |  |  |  |  |

| ID | WBS | Task | Duration | Start | Finish | Predecessors | Total slack | Resources | Work | Cost |
| --- | --- | --- | --- | --- | --- | --- | --- | --- | --- | --- |
| 136 | 18 | **Complete Final Inspections** | 5.4d | 2024-05-27 | 2024-06-03 |  | 0d |  | 84h | 14,782 |
| 137 | 18.1 | Complete elevator inspection and certification | 2.1d | 2024-05-27 | 2024-05-30 | 134, 112 | 0d | Elevator Contractor [0.1%]; G.C. General Management; G.C. Superintendent | 54h | 10,582 |
| 138 | 18.2 | Perform architect's inspection | 1d | 2024-05-30 | 2024-05-31 | 134, 108, 137 | 0d | G.C. Superintendent [50%]; G.C. Project Management [50%] | 10h | 1,400 |
| 139 | 18.3 | Perform local building agency inspection | 1d | 2024-05-31 | 2024-06-01 | 138 | 0d | G.C. Project Management [50%]; G.C. Superintendent [50%] | 10h | 1,400 |
| 140 | 18.4 | Perform Fire Marshal's inspection | 1d | 2024-06-01 | 2024-06-03 | 139 | 0d | G.C. Superintendent [50%]; G.C. Project Management [50%] | 10h | 1,400 |
| 141 | 19 | Complete punch list items from all inspections | 18d | 2024-06-03 | 2024-06-26 | 140 | 0d | G.C. Superintendent [11%]; G.C. Labor Crew [11%]; Plumbing Contractor [0.1%]; Electric Contractor [0.1%]; HVAC Contractor [0.1%]; Drywall Contractor [0.1%]; Carpet Contractor [0.1%]; Paving Contractor [0.1%]; Painting Contractor [0.1%] | 99.8h | 40,330 |
| 142 | 20 | Obtain certificate of occupancy | 2d | 2024-06-26 | 2024-06-28 | 141 | 2.69d | G.C. Project Management | 16h | 1,920 |
| 143 | 21 | Issue final completion documents including warranties | 1d | 2024-07-01 | 2024-07-01 | 141 | 0d | G.C. Project Management | 6h | 720 |
| 144 | 22 | Issue final request for payment | 1d | 2024-07-02 | 2024-07-02 | 142, 143 | 0d | G.C. Project Management [33%]; G.C. Accounting [33%]; G.C. General Management [33%] | 9.9h | 1,056 |

Notes:
- 136: Give Inspection 3 days lead time prior to walkthrough
